# 陆缆及气象站施工

How a schedule from a web Gantt chart changed from version to version. A marks actual dates.

## Version 1 (saved 2025-12-17)

| ID | WBS | Task | Duration | Start | Finish | Predecessors |
| --- | --- | --- | --- | --- | --- | --- |
| 2 | 1 | **陆缆** | 12d | 2025-12-17 | 2025-12-28 |  |
| 4 | 1.1 | **5-8号井、27号井** | 5d | 2025-12-18 | 2025-12-22 |  |
| 5 |  | 土方开挖及混凝土垫层浇筑 | 1d | 2025-12-18 | 2025-12-18 |  |
| 6 |  | 底模钢筋模板支设 | 1d | 2025-12-19 | 2025-12-19 | 5 |
| 7 |  | 底模浇筑 | 1d | 2025-12-20 | 2025-12-20 | 6 |
| 8 |  | 井身钢筋模板支设 | 1d | 2025-12-21 | 2025-12-21 | 7 |
| 9 |  | 井身浇筑 | 1d | 2025-12-22 | 2025-12-22 | 8 |
| 10 | 1.2 | **1-4号井** | 5d | 2025-12-24 | 2025-12-28 |  |
| 11 |  | 土方开挖及混凝土垫层浇筑 | 1d | 2025-12-24 | 2025-12-24 |  |
| 12 |  | 底模钢筋模板支设 | 1d | 2025-12-25 | 2025-12-25 | 11 |
| 13 |  | 底模浇筑 | 1d | 2025-12-26 | 2025-12-26 | 12 |
| 14 |  | 井身钢筋模板支设 | 1d | 2025-12-27 | 2025-12-27 | 13 |
| 15 |  | 井身浇筑 | 1d | 2025-12-28 | 2025-12-28 | 14 |
| 16 | 1.3 | **9-14号井** | 3d | 2025-12-18 | 2025-12-20 |  |
| 17 |  | 底模浇筑 | 1d | 2025-12-18 | 2025-12-18 |  |
| 18 |  | 井身钢筋模板支设 | 1d | 2025-12-19 | 2025-12-19 | 17 |
| 19 |  | 井身浇筑 | 1d | 2025-12-20 | 2025-12-20 | 18 |
| 20 | 1.4 | **15-18号井** | 2d | 2025-12-17 | 2025-12-18 |  |
| 21 |  | 井身钢筋模板支设 | 1d | 2025-12-17 | 2025-12-17 |  |
| 22 |  | 井身浇筑 | 1d | 2025-12-18 | 2025-12-18 | 21 |
| 23 |  | 19-26号井（已完成） | 1d | 2025-12-17 | 2025-12-17 |  |
| 24 |  | 28-31号井（已完成） | 1d | 2025-12-17 | 2025-12-17 |  |
| 25 | 1.7 | **32-36号井** | 1d | 2025-12-18 | 2025-12-18 |  |
| 26 |  | 井身浇筑 | 1d | 2025-12-18 | 2025-12-18 |  |
| 27 | 2 | **气象站** | 12d | 2025-12-17 | 2025-12-28 |  |
| 28 | 2.1 | **挡土墙** | 6d | 2025-12-17 | 2025-12-22 |  |
| 29 |  | 挡土墙砌筑 | 3d | 2025-12-17 | 2025-12-19 |  |
| 30 |  | 挡土墙土方回填 | 1d | 2025-12-22 | 2025-12-22 |  |
| 31 | 2.2 | **气象站基础** | 4d | 2025-12-23 | 2025-12-26 |  |
| 32 |  | 基础开挖回填及垫层浇筑 | 1d | 2025-12-23 | 2025-12-23 | 30 |
| 33 |  | 基础钢筋模板 | 2d | 2025-12-24 | 2025-12-25 | 32 |
| 34 |  | 基础浇筑 | 1d | 2025-12-26 | 2025-12-26 | 33 |
| 35 |  | 栅栏安装 | 2d | 2025-12-27 | 2025-12-28 | 34 |

## Version 2 (saved 2025-12-17)

Last finish stays 2025-12-28.

Added:

| ID | Task | Duration | Start | Finish |
| --- | --- | --- | --- | --- |
| 3 | **5-8号井** | 1d | 2025-12-18 | 2025-12-18 |
| 4 | **井体** | 1d | 2025-12-18 | 2025-12-18 |
| 10 | **铺管包封** | 1d | 2025-12-22 | 2025-12-22 |
| 11 | 土方开挖 | 1d | 2025-12-22 | 2025-12-22 |
| 12 | 铺管 | 1d | 2025-12-22 | 2025-12-22 |
| 13 | 包封 | 1d | 2025-12-22 | 2025-12-22 |

Removed: 4 5-8号井、27号井

## Version 3 (saved 2025-12-18)

Last finish stays 2025-12-28.

Added:

| ID | Task | Duration | Start | Finish |
| --- | --- | --- | --- | --- |
| 3 | **4-7号井** | 1d | 2025-12-18 | 2025-12-18 |
| 14 | **1-3号井、8号井** | 5d | 2025-12-24 | 2025-12-28 |

Removed: 3 5-8号井; 14 1-4号井
