# 草海典型性水域水生态保护与修复工程(2024工期计划)

How a schedule from a web Gantt chart changed from version to version. A marks actual dates.

## Version 1 (saved 2024-06-02)

| ID | WBS | Task | Duration | Start | Finish | Predecessors |
| --- | --- | --- | --- | --- | --- | --- |
| 2 | 1 | **一、退耕还湖湿地** | 132d | 2024-03-01 | 2024-07-10 |  |
| 3 | 1.1 | **水生植物恢复工程** | 122d | 2024-03-01 | 2024-06-30 |  |
| 4 |  | 矮生苦草等已种沉水植物补种 | 71d | 2024-03-01 | 2024-05-10 |  |
| 5 |  | 金鱼藻、海菜花种植及补种 | 51d | 2024-05-13 | 2024-07-02 | 4 |
| 6 | 1.2 | **鱼类种群调控工程** | 10d | 2024-07-01 | 2024-07-10 |  |
| 7 |  | 鱼类投放 | 10d | 2024-07-01 | 2024-07-10 | 5 |
| 8 | 2 | **二、入湖河口湿地** | 342d | 2024-01-09 | 2024-12-15 |  |
| 9 | 2.1 | **临时场地场地建设** | 62d | 2024-01-09 | 2024-03-10 |  |
| 10 |  | 临时场地基础建设 | 25d | 2024-01-09 | 2024-02-02 |  |
| 11 |  | 临时场地设备进场及安装 | 20d | 2024-02-20 | 2024-03-10 |  |
| 12 | 2.2 | **生态围隔布设工程（拦鱼网布设已完成）** | 10d | 2024-02-20 | 2024-02-29 |  |
| 13 |  | 软围隔布设 | 10d | 2024-02-20 | 2024-02-29 |  |
| 14 | 2.3 | **鱼类种群调控工程** | 290d | 2024-03-01 | 2024-12-15 |  |
| 15 |  | 清除鱼类 | 10d | 2024-03-01 | 2024-03-10 | 13 |
| 16 |  | 鱼类投放（局部调控） | 10d | 2024-12-06 | 2024-12-15 | 23 |
| 17 | 2.4 | **表层浮泥清除** | 240d | 2024-03-11 | 2024-11-05 |  |
| 18 |  | 清除表层浮泥第一期 | 30d | 2024-03-11 | 2024-04-09 | 11, 15 |
| 19 |  | 六个月观察期 | 180d | 2024-04-10 | 2024-10-06 | 18 |
| 20 |  | 清除表层浮泥第二期 | 30d | 2024-10-07 | 2024-11-05 | 19 |
| 21 | 2.5 | **水生植物恢复工程** | 240d | 2024-04-10 | 2024-12-05 |  |
| 22 |  | 沉水植物种植及补种第一期（约8.3万平方） | 60d | 2024-04-10 | 2024-06-08 | 18 |
| 23 |  | 沉水植物种植及补种第二期（约3.3万平方） | 30d | 2024-11-06 | 2024-12-05 | 20 |
| 24 | 3 | **三、敞水区** | 125d | 2024-05-01 | 2024-09-02 |  |
| 25 | 3.1 | **生态围隔布设工程** | 15d | 2024-05-01 | 2024-05-15 |  |
| 26 |  | 不透水围隔 | 15d | 2024-05-01 | 2024-05-15 |  |
| 27 |  | 拦鱼网 | 15d | 2024-05-01 | 2024-05-15 |  |
| 28 | 3.2 | **鱼类种群调控工程** | 110d | 2024-05-16 | 2024-09-02 |  |
| 29 |  | 清除鱼类 | 10d | 2024-05-16 | 2024-05-25 | 26, 27 |
| 30 |  | 鱼类投放 | 10d | 2024-08-26 | 2024-09-04 | 32 |
| 31 | 3.3 | **水生植物恢复工程** | 90d | 2024-05-27 | 2024-08-24 |  |
| 32 |  | 沉水植物种植及补种 | 90d | 2024-05-27 | 2024-08-24 | 29 |
| 33 | 4 | **四、水生态监管能力建设** | 366d | 2024-01-01 | 2024-12-31 |  |
| 34 |  | 跟踪监测评估 | 366d | 2024-01-01 | 2024-12-31 |  |
| 35 |  | 测藻仪采购及安装 | 214d | 2024-04-01 | 2024-10-31 |  |
| 36 |  | 水生态管理能力建设报告编制 | 214d | 2024-04-01 | 2024-10-31 |  |

## Version 2 (saved 2024-06-02)

Last finish stays 2024-12-31.

Added:

| ID | Task | Duration | Start | Finish | Predecessors |
| --- | --- | --- | --- | --- | --- |
| 22 | 沉水植物种植及补种第一期（约8.67万平方） | 60d | 2024-04-10 | 2024-06-08 | 18 |

Removed: 22 沉水植物种植及补种第一期（约8.3万平方）

Changed:

| ID | Task | Start | Finish | Duration | Predecessors |
| --- | --- | --- | --- | --- | --- |
| 2 | **一、退耕还湖湿地** |  | 2024-07-10 → 2024-09-10 (+62d) | 132d → 194d |  |
| 3 | **水生植物恢复工程** |  | 2024-06-30 → 2024-08-31 (+62d) | 122d → 184d |  |
| 4 | 矮生苦草等已种沉水植物补种 |  | 2024-05-10 → 2024-06-08 (+29d) | 71d → 100d |  |
| 5 | 金鱼藻、海菜花种植及补种 | 2024-05-13 → 2024-06-10 (+28d) | 2024-07-02 → 2024-09-01 (+61d) | 51d → 84d |  |
| 6 | **鱼类种群调控工程** | 2024-07-01 → 2024-09-02 (+63d) | 2024-07-10 → 2024-09-11 (+63d) |  |  |
| 7 | 鱼类投放 | 2024-07-01 → 2024-09-02 (+63d) | 2024-07-10 → 2024-09-11 (+63d) |  |  |
| 12 | **生态围隔布设工程（拦鱼网布设已完成）** | 2024-02-20 → 2024-05-01 (+71d) | 2024-02-29 → 2024-05-20 (+81d) | 10d → 20d |  |
| 13 | 软围隔布设 | 2024-02-20 → 2024-05-01 (+71d) | 2024-02-29 → 2024-05-20 (+81d) | 10d → 20d |  |
| 14 | **鱼类种群调控工程** | 2024-03-01 → 2024-05-21 (+81d) |  | 290d → 209d |  |
| 15 | 清除鱼类 | 2024-03-01 → 2024-05-21 (+81d) | 2024-03-10 → 2024-06-19 (+101d) | 10d → 30d |  |
| 18 | 清除表层浮泥第一期 |  |  |  | 11, 15 → 11 |
| 24 | **三、敞水区** |  | 2024-09-02 → 2024-09-07 (+5d) | 125d → 130d |  |
| 25 | **生态围隔布设工程** |  | 2024-05-15 → 2024-05-20 (+5d) | 15d → 20d |  |
| 26 | 不透水围隔 |  | 2024-05-15 → 2024-05-20 (+5d) | 15d → 20d |  |
| 27 | 拦鱼网 |  | 2024-05-15 → 2024-05-20 (+5d) | 15d → 20d |  |
| 28 | **鱼类种群调控工程** | 2024-05-16 → 2024-05-21 (+5d) | 2024-09-02 → 2024-09-07 (+5d) |  |  |
| 29 | 清除鱼类 | 2024-05-16 → 2024-05-21 (+5d) | 2024-05-25 → 2024-05-30 (+5d) |  |  |
| 30 | 鱼类投放 | 2024-08-26 → 2024-08-29 (+3d) | 2024-09-04 → 2024-09-07 (+3d) |  |  |
| 31 | **水生植物恢复工程** | 2024-05-27 → 2024-05-31 (+4d) | 2024-08-24 → 2024-08-28 (+4d) |  |  |
| 32 | 沉水植物种植及补种 | 2024-05-27 → 2024-05-31 (+4d) | 2024-08-24 → 2024-08-28 (+4d) |  |  |
| 35 | 测藻仪采购及安装 |  | 2024-10-31 → 2024-12-31 (+61d) | 214d → 275d |  |
| 36 | 水生态管理能力建设报告编制 |  | 2024-10-31 → 2024-12-31 (+61d) | 214d → 275d |  |
