# 草海典型性水域水生态保护与修复工程(施工总进度计划)

How a schedule from a web Gantt chart changed from version to version. A marks actual dates.

## Version 1 (saved 2024-06-02)

| ID | WBS | Task | Duration | Start | Finish | Predecessors |
| --- | --- | --- | --- | --- | --- | --- |
| 2 | 1 | **施工准备** | 1d | 2024-03-01 | 2024-03-01 |  |
| 3 |  | 杀杀杀 | 1d | 2024-03-01 | 2024-03-01 |  |
| 5 | 2 | **一、退耕还湖湿地** | 194d | 2024-03-01 | 2024-09-10 |  |
| 6 | 2.1 | **水生植物恢复工程** | 184d | 2024-03-01 | 2024-08-31 |  |
| 7 |  | 矮生苦草等已种沉水植物补种 | 100d | 2024-03-01 | 2024-06-08 |  |
| 8 |  | 金鱼藻、海菜花种植及补种 | 84d | 2024-06-10 | 2024-09-01 | 7 |
| 9 | 2.2 | **鱼类种群调控工程** | 10d | 2024-09-02 | 2024-09-11 |  |
| 10 |  | 鱼类投放 | 10d | 2024-09-02 | 2024-09-11 | 8 |
| 11 | 3 | **二、入湖河口湿地** | 342d | 2024-01-09 | 2024-12-15 |  |
| 12 | 3.1 | **临时场地场地建设** | 62d | 2024-01-09 | 2024-03-10 |  |
| 13 |  | 临时场地基础建设 | 25d | 2024-01-09 | 2024-02-02 |  |
| 14 |  | 临时场地设备进场及安装 | 20d | 2024-02-20 | 2024-03-10 |  |
| 15 | 3.2 | **生态围隔布设工程（拦鱼网布设已完成）** | 20d | 2024-05-01 | 2024-05-20 |  |
| 16 |  | 软围隔布设 | 20d | 2024-05-01 | 2024-05-20 |  |
| 17 | 3.3 | **鱼类种群调控工程** | 209d | 2024-05-21 | 2024-12-15 |  |
| 18 |  | 清除鱼类 | 30d | 2024-05-21 | 2024-06-19 | 16 |
| 19 |  | 鱼类投放（局部调控） | 10d | 2024-12-06 | 2024-12-15 | 26 |
| 20 | 3.4 | **表层浮泥清除** | 240d | 2024-03-11 | 2024-11-05 |  |
| 21 |  | 清除表层浮泥第一期 | 30d | 2024-03-11 | 2024-04-09 | 14 |
| 22 |  | 六个月观察期 | 180d | 2024-04-10 | 2024-10-06 | 21 |
| 23 |  | 清除表层浮泥第二期 | 30d | 2024-10-07 | 2024-11-05 | 22 |
| 24 | 3.5 | **水生植物恢复工程** | 240d | 2024-04-10 | 2024-12-05 |  |
| 25 |  | 沉水植物种植及补种第一期（约8.67万平方） | 60d | 2024-04-10 | 2024-06-08 | 21 |
| 26 |  | 沉水植物种植及补种第二期（约3.3万平方） | 30d | 2024-11-06 | 2024-12-05 | 23 |
| 27 | 4 | **三、敞水区** | 130d | 2024-05-01 | 2024-09-07 |  |
| 28 | 4.1 | **生态围隔布设工程** | 20d | 2024-05-01 | 2024-05-20 |  |
| 29 |  | 不透水围隔 | 20d | 2024-05-01 | 2024-05-20 |  |
| 30 |  | 拦鱼网 | 20d | 2024-05-01 | 2024-05-20 |  |
| 31 | 4.2 | **鱼类种群调控工程** | 110d | 2024-05-21 | 2024-09-07 |  |
| 32 |  | 清除鱼类 | 10d | 2024-05-21 | 2024-05-30 | 29, 30 |
| 33 |  | 鱼类投放 | 10d | 2024-08-29 | 2024-09-07 | 35 |
| 34 | 4.3 | **水生植物恢复工程** | 90d | 2024-05-31 | 2024-08-28 |  |
| 35 |  | 沉水植物种植及补种 | 90d | 2024-05-31 | 2024-08-28 | 32 |
| 36 | 5 | **四、水生态监管能力建设** | 366d | 2024-01-01 | 2024-12-31 |  |
| 37 |  | 跟踪监测评估 | 366d | 2024-01-01 | 2024-12-31 |  |
| 38 |  | 测藻仪采购及安装 | 275d | 2024-04-01 | 2024-12-31 |  |
| 39 |  | 水生态管理能力建设报告编制 | 275d | 2024-04-01 | 2024-12-31 |  |

## Version 2 (saved 2024-06-02)

Last finish 2024-12-31 → 2026-08-09 (+586d).

Added:

| ID | Task | Duration | Start | Finish | Predecessors |
| --- | --- | --- | --- | --- | --- |
| 2 | **施工准备（已获得省林业局审批）** | 40d | 2023-11-13 | 2023-12-22 |  |
| 3 | 临时用地申请手续 | 40d | 2023-11-13 | 2023-12-22 |  |
| 4 | 人员、材料准备 | 7d | 2023-11-13 | 2023-11-19 |  |
| 6 | **生态围隔布设工程** | 20d | 2023-11-20 | 2023-12-09 |  |
| 7 | 拦鱼网布设 | 20d | 2023-11-20 | 2023-12-09 | 4 |
| 9 | 清除鱼类 | 10d | 2023-12-10 | 2023-12-19 | 7 |
| 11 | **底质改良** | 10d | 2023-12-20 | 2023-12-29 |  |
| 12 | 投撒底质改良剂 | 10d | 2023-12-20 | 2023-12-29 | 9 |
| 14 | 沉水植物种植及补种 | 200d | 2023-12-30 | 2024-07-16 | 12 |
| 19 | **生态围隔布设工程** | 50d | 2023-12-10 | 2024-01-28 |  |
| 20 | 拦鱼网布设 | 20d | 2023-12-10 | 2023-12-29 | 7 |
| 24 | 鱼类投放 | 10d | 2025-08-03 | 2025-08-12 | 34 |
| 26 | 表层浮泥清除第一期 | 40d | 2024-03-11 | 2024-04-19 | 18 |
| 28 | 表层浮泥清除第二期 | 40d | 2024-10-17 | 2024-11-25 | 27 |
| 29 | 六个月观察期 | 180d | 2024-11-26 | 2025-05-24 | 28 |
| 30 | 表层浮泥清除第三期 | 40d | 2025-05-25 | 2025-07-03 | 29 |
| 33 | 沉水植物种植及补种第二期（约3.33万平方） | 30d | 2024-11-26 | 2024-12-25 | 28 |
| 34 | 沉水植物种植及补种第三期（约3万平） | 30d | 2025-07-04 | 2025-08-02 | 30 |
| 37 | 拦鱼网布设 | 15d | 2024-05-01 | 2024-05-15 |  |

Removed: 2 施工准备; 3 杀杀杀; 7 矮生苦草等已种沉水植物补种; 8 金鱼藻、海菜花种植及补种; 15 生态围隔布设工程（拦鱼网布设已完成）; 19 鱼类投放（局部调控）; 21 清除表层浮泥第一期; 23 清除表层浮泥第二期; 26 沉水植物种植及补种第二期（约3.3万平方）; 30 拦鱼网

Changed:

| ID | Task | Start | Finish | Duration | Predecessors |
| --- | --- | --- | --- | --- | --- |
| 5 | **一、退耕还湖湿地** | 2024-03-01 → 2023-11-20 (-102d) | 2024-09-10 → 2024-07-26 (-46d) | 194d → 250d |  |
| 8 | **鱼类种群调控工程** | 2024-09-02 → 2023-12-10 (-267d) | 2024-09-11 → 2024-07-26 (-47d) | 10d → 230d |  |
| 10 | 鱼类投放 | 2024-09-02 → 2024-07-17 (-47d) | 2024-09-11 → 2024-07-26 (-47d) |  | 金鱼藻、海菜花种植及补种 → 14 |
| 13 | **水生植物恢复工程** | 2024-03-01 → 2023-12-30 (-62d) | 2024-08-31 → 2024-07-16 (-46d) | 184d → 200d |  |
| 15 | **二、入湖河口湿地** | 2024-01-09 → 2023-12-10 (-30d) | 2024-12-15 → 2025-08-12 (+240d) | 342d → 612d |  |
| 16 | **临时场地场地建设** | 2024-01-09 → 2023-12-23 (-17d) |  | 62d → 79d |  |
| 17 | 临时场地基础建设 | 2024-01-09 → 2023-12-23 (-17d) | 2024-02-02 → 2024-01-31 (-2d) | 25d → 40d | none → 3 |
| 21 | 软围隔布设 | 2024-05-01 → 2023-12-30 (-123d) | 2024-05-20 → 2024-01-28 (-113d) | 20d → 30d | none → 20 |
| 22 | **鱼类种群调控工程** | 2024-05-21 → 2024-01-29 (-113d) | 2024-12-15 → 2025-08-12 (+240d) | 209d → 562d |  |
| 23 | 清除鱼类 | 2024-05-21 → 2024-01-29 (-113d) | 2024-06-19 → 2024-03-08 (-103d) | 30d → 40d |  |
| 25 | **表层浮泥清除** |  | 2024-11-05 → 2025-07-03 (+240d) | 240d → 480d |  |
| 27 | 六个月观察期 | 2024-04-10 → 2024-04-20 (+10d) | 2024-10-06 → 2024-10-16 (+10d) |  | 清除表层浮泥第一期 → 26 |
| 31 | **水生植物恢复工程** | 2024-04-10 → 2024-04-20 (+10d) | 2024-12-05 → 2025-08-02 (+240d) | 240d → 470d |  |
| 32 | 沉水植物种植及补种第一期（约8.67万平方） | 2024-04-10 → 2024-04-20 (+10d) | 2024-06-08 → 2024-06-18 (+10d) |  | 清除表层浮泥第一期 → 26 |
| 35 | **三、敞水区** |  | 2024-09-07 → 2024-10-12 (+35d) | 130d → 165d |  |
| 36 | **生态围隔布设工程** |  | 2024-05-20 → 2024-05-30 (+10d) | 20d → 30d |  |
| 38 | 不透水围隔 | 2024-05-01 → 2024-05-16 (+15d) | 2024-05-20 → 2024-05-30 (+10d) | 20d → 15d | none → 37 |
| 39 | **鱼类种群调控工程** | 2024-05-21 → 2024-05-16 (-5d) | 2024-09-07 → 2024-10-12 (+35d) | 110d → 150d |  |
| 40 | 清除鱼类 | 2024-05-21 → 2024-05-16 (-5d) |  | 10d → 15d | 38, 拦鱼网 → 37 |
| 41 | 鱼类投放 | 2024-08-29 → 2024-09-28 (+30d) | 2024-09-07 → 2024-10-12 (+35d) | 10d → 15d |  |
| 42 | **水生植物恢复工程** |  | 2024-08-28 → 2024-09-27 (+30d) | 90d → 120d |  |
| 43 | 沉水植物种植及补种 |  | 2024-08-28 → 2024-09-27 (+30d) | 90d → 120d |  |
| 44 | **四、水生态监管能力建设** | 2024-01-01 → 2023-10-01 (-92d) | 2024-12-31 → 2026-08-09 (+586d) | 366d → 1044d |  |
| 45 | 跟踪监测评估 | 2024-01-01 → 2023-10-01 (-92d) | 2024-12-31 → 2026-08-09 (+586d) | 366d → 1044d |  |

## Version 3 (saved 2024-11-06)

Last finish 2026-08-09 → 2026-09-21 (+43d).

Changed:

| ID | Task | Start | Finish |
| --- | --- | --- | --- |
| 44 | **四、水生态监管能力建设** | 2023-10-01 → 2023-11-13 (+43d) | 2026-08-09 → 2026-09-21 (+43d) |
| 45 | 跟踪监测评估 | 2023-10-01 → 2023-11-13 (+43d) | 2026-08-09 → 2026-09-21 (+43d) |
